# Site_CulturaDeportes001_WBS

Schedule from MS Project, 2016-05-02 to 2016-08-12, costs in $, A marks actual dates.

## Calendars

- Estándar: Mon-Fri 09:00-13:00, 15:00-19:00; Sat 09:00-13:00; Sun off.

## Resources

| Resource | Rate |
| --- | --- |
| Estefani Garduño Alvarado(Administrador de proyecto) | 90.02 |
| Yesica Mejia Ramirez(Analista) | 66.86 |
| Alexis Sebastian Ramos (Diseñador) | 67.47 |
| Francisco Bautista (Programador) | 56.85 |
| Francisco Bautista (Tester) | 65.22 |
| Yesica Mejia Ramirez (Administrador de la configuración) | 52.38 |
| Alexis Ramos Caballero (Asegurador de la calidad) | 61.28 |
| Cliente |  |

## Schedule

| ID | WBS | Task | Type | Duration | Start | Finish | Predecessors | Complete | Remaining | Total slack | Resources | Work | Actual work | Cost | Actual cost |
| --- | --- | --- | --- | --- | --- | --- | --- | --- | --- | --- | --- | --- | --- | --- | --- |
| 1 | 1 | **Plan preeliminar** |  | 1.88d | 2016-05-02 09:00 A | 2016-05-03 18:00 A |  | 100% |  |  |  | 15h | 15h | 1,049.22 | 1,049.22 |
| 2 | 1.1 | Generar WBS del producto inicial |  | 4h | 2016-05-02 09:00 A | 2016-05-02 13:00 A |  | 100% |  |  | Yesica Mejia Ramirez(Analista) | 4h | 4h | 267.44 | 267.44 |
| 3 | 1.2 | Generar project charter |  | 1h | 2016-05-02 15:00 A | 2016-05-02 16:00 A | 2 | 100% |  |  | Estefani Garduño Alvarado(Administrador de proyecto) | 1h | 1h | 90.02 | 90.02 |
| 4 | 1.3 | Plan preeliminar del proyecto |  | 8h | 2016-05-02 16:00 A | 2016-05-03 16:00 A | 3 | 100% |  |  | Yesica Mejia Ramirez(Analista) | 8h | 8h | 534.88 | 534.88 |
| 5 | 1.4 | Matriz de comunicación |  | 1h | 2016-05-03 16:00 A | 2016-05-03 17:00 A | 4 | 100% |  |  | Yesica Mejia Ramirez(Analista) | 1h | 1h | 66.86 | 66.86 |
| 6 | 1.5 | Minuta de inicio |  | 1h | 2016-05-03 17:00 A | 2016-05-03 18:00 A | 5 | 100% |  |  | Estefani Garduño Alvarado(Administrador de proyecto) | 1h | 1h | 90.02 | 90.02 |
| 7 | 1.6 | El WBS contiene todas las tareas a realizar para integrar el proyecto, el project charter contiene participantes(roles), presupuesto,alcance, duración , la matriz de comunicaciones contiene los responsables de elaborar los entregables y su distribución | milestone | 0d | 2016-05-02 09:00 A | 2016-05-02 09:00 A |  | 100% |  |  |  |  |  |  |  |
| 8 | 2 | **Site Cultura Deporte 01** |  | 79.12d | 2016-05-03 18:00 A | 2016-08-12 09:00 | 6 | 93% | 5.89d | 0d |  | 203h | 180h | 13,945.13 | 12,166.22 |
| 9 | 2.1 | Formación del equipo |  | 8h | 2016-05-03 18:00 A | 2016-05-04 18:00 A | 6 | 100% |  |  | Estefani Garduño Alvarado(Administrador de proyecto) | 8h | 8h | 720.16 | 720.16 |
| 10 | 2.2 | El equipo estara conformado con las personas que cumplan con el perfil requerido | milestone | 0d | 2016-05-03 18:00 A | 2016-05-03 18:00 A |  | 100% |  |  |  |  |  |  |  |
| 11 | 2.3 | **Construcción** |  | 78.12d | 2016-05-04 18:00 A | 2016-08-12 09:00 | 9 | 92% | 6.1d | 0d |  | 195h | 172h | 13,224.97 | 11,446.06 |
| 12 | 2.3.1 | **Analisis** |  | 5.25d | 2016-05-04 18:00 A | 2016-05-11 16:00 | 9 | 99% | 0d | 0d |  | 55.5h | 48.5h | 4,023.39 | 3,393.25 |
| 13 | 2.3.1.1 | **Elicitación** |  | 3.12d | 2016-05-04 18:00 A | 2016-05-09 13:00 A | 9 | 100% |  |  |  | 29.5h | 29.5h | 2,076.59 | 2,076.59 |
| 14 | 2.3.1.1.1 | Generar lista de proveedores |  | 2h | 2016-05-04 18:00 A | 2016-05-05 10:00 A | 9 | 100% |  |  | Yesica Mejia Ramirez(Analista); Estefani Garduño Alvarado(Administrador de proyecto) | 4h | 4h | 313.76 | 313.76 |
| 15 | 2.3.1.1.2 | Evaluar proveedores de requerimientos |  | 1h | 2016-05-05 10:00 A | 2016-05-05 11:00 A | 14 | 100% |  |  | Yesica Mejia Ramirez(Analista); Estefani Garduño Alvarado(Administrador de proyecto) | 2h | 2h | 156.88 | 156.88 |
| 16 | 2.3.1.1.3 | Definir estrategia de recolección de datos |  | 0.5h | 2016-05-05 11:00 A | 2016-05-05 11:30 A | 15 | 100% |  |  | Yesica Mejia Ramirez(Analista); Estefani Garduño Alvarado(Administrador de proyecto) | 0.5h | 0.5h | 33.43 | 33.43 |
| 17 | 2.3.1.1.4 | Planificación de reuniones de licitación |  | 1.5h | 2016-05-05 11:30 A | 2016-05-05 13:00 A | 16 | 100% |  |  | Yesica Mejia Ramirez(Analista); Estefani Garduño Alvarado(Administrador de proyecto) | 3h | 3h | 235.32 | 235.32 |
| 18 | 2.3.1.1.5 | Identificar procesos del sistema |  | 8h | 2016-05-05 15:00 A | 2016-05-06 13:00 A | 17 | 100% |  |  | Yesica Mejia Ramirez(Analista); Estefani Garduño Alvarado(Administrador de proyecto) | 8h | 8h | 534.88 | 534.88 |
| 19 | 2.3.1.1.6 | identificar requerimientos funcionales |  | 8h | 2016-05-06 15:00 A | 2016-05-07 13:00 A | 18 | 100% |  |  | Yesica Mejia Ramirez(Analista); Estefani Garduño Alvarado(Administrador de proyecto) | 8h | 8h | 534.88 | 534.88 |
| 20 | 2.3.1.1.7 | Identificar requerimientos no funcionales |  | 4h | 2016-05-09 09:00 A | 2016-05-09 13:00 A | 19FS-2h | 100% |  |  | Yesica Mejia Ramirez(Analista); Estefani Garduño Alvarado(Administrador de proyecto) | 4h | 4h | 267.44 | 267.44 |
| 21 | 2.3.1.2 | **Especificación** |  | 1d | 2016-05-09 15:00 A | 2016-05-10 13:00 A | 20 | 100% |  |  |  | 8h | 8h | 534.88 | 534.88 |
| 22 | 2.3.1.2.1 | Evaluación de requerimientos |  | 2h | 2016-05-09 15:00 A | 2016-05-09 17:00 A | 20 | 100% |  |  | Yesica Mejia Ramirez(Analista); Estefani Garduño Alvarado(Administrador de proyecto) | 2h | 2h | 133.72 | 133.72 |
| 23 | 2.3.1.2.2 | SRS |  | 6h | 2016-05-09 17:00 A | 2016-05-10 13:00 A | 22FS-2h | 100% |  |  | Yesica Mejia Ramirez(Analista) | 6h | 6h | 401.16 | 401.16 |
| 24 | 2.3.1.3 | **Gestion de requerimientos** |  | 1.12d | 2016-05-10 15:00 A | 2016-05-11 16:00 | 23 | 99% | 0d | 0d | Estefani Garduño Alvarado(Administrador de proyecto) | 18h | 11h | 1,411.92 | 781.78 |
| 25 | 2.3.1.3.1 | Priorizar requerimientos |  | 2h | 2016-05-10 15:00 A | 2016-05-10 17:00 A | 23 | 100% |  |  | Yesica Mejia Ramirez(Analista); Estefani Garduño Alvarado(Administrador de proyecto) | 2h | 2h | 133.72 | 133.72 |
| 26 | 2.3.1.3.2 | Almacenar en repositorio |  | 0.5h | 2016-05-10 17:00 A | 2016-05-10 17:30 A | 25 | 100% |  |  | Yesica Mejia Ramirez(Analista); Estefani Garduño Alvarado(Administrador de proyecto) | 0.5h | 0.5h | 33.43 | 33.43 |
| 27 | 2.3.1.3.3 | Asignar a desarrolladores de software |  | 1h | 2016-05-10 17:30 A | 2016-05-10 18:30 A | 26 | 100% |  |  | Yesica Mejia Ramirez(Analista); Estefani Garduño Alvarado(Administrador de proyecto) | 1h | 1h | 66.86 | 66.86 |
| 28 | 2.3.1.3.4 | Administración de cambios de requerimientos |  | 0.5h | 2016-05-10 18:30 A | 2016-05-10 19:00 A | 27 | 100% |  |  | Yesica Mejia Ramirez(Analista); Estefani Garduño Alvarado(Administrador de proyecto) | 0.5h | 0.5h | 33.43 | 33.43 |
| 29 | 2.3.1.3.5 | Administración de la trazabilidad de requerimientos |  | 5h | 2016-05-11 09:00 A | 2016-05-11 16:00 A | 28 | 100% |  |  | Yesica Mejia Ramirez(Analista); Estefani Garduño Alvarado(Administrador de proyecto) | 5h | 5h | 334.3 | 334.3 |
| 30 | 2.3.2 | Entregar requerimientos funcionales y no funcionales, proveedores, asignacion de requerimientos | milestone | 0d | 2016-05-04 18:00 | 2016-05-04 18:00 |  |  |  | 0d |  |  |  |  |  |

Notes:
- 2: Definir las actividades que se realizarán durante la ejecucion del proyecto así como establecer duración, fecha de inicio, fecha de fin, recursos y costos
- 3: Especificar el alcance del proyecto, así como, los recursos y responsables de desarrollar el proyecto, el presupuesto se especifica.
- 4: Definir las tareas, los recursos, tiempos en los que se desarrollará el proyecto
- 5: Plasmar los entregables dentro del proyecto, asi como los responsables de desarrollarlos y especificar a quien se entregara y por que medio.
- 9: Integrar a cada uno de los roles necesarios para desarrollar el proyecto que cuenten con el perfil especificado
- 14: Integrar la lista con cada uno de los proveedores de los recursos materiales
- 15: Realizar una evaluación de los posibles proveedores y elegir a los más adecuados
- 16: Elegir la herramienta que se adecue a la información que se quere recolectar
- 17: Proponer las fechas de reuniones
- 18: Detallar los procesos que realizara el sistema
- 19: Referir las funciones que llevará a cabo el sistema
- 20: Describir los colores, la seguridad y todas aquellas especificaciones del sistema
- 22: Valorar cada uno de los requerimientos y excluir aquellos que no nos sirven
- 23: Integrar los requerimientos funcionales y no funcionales en el documento de especificación de requerimientos
- 25: valuar los requerimientos y definir el orden en que se realizarán
- 26: Guardar los documentos en un repositorio, accesible a todos
- 27: Repartir los requerimientos entre los roles

| ID | WBS | Task | Type | Duration | Start | Finish | Predecessors | Complete | Resources | Work | Actual work | Cost | Actual cost |
| --- | --- | --- | --- | --- | --- | --- | --- | --- | --- | --- | --- | --- | --- |
| 31 | 2.3.3 | **Planificación** |  | 3.12d | 2016-05-11 16:00 A | 2016-05-16 11:00 A | 29 | 100% |  | 32h | 32h | 2,458.26 | 2,458.26 |
| 32 | 2.3.3.1 | Definición del ciclo de vida |  | 0.5h | 2016-05-11 16:00 A | 2016-05-11 16:30 A | 29 | 100% | Yesica Mejia Ramirez(Analista); Estefani Garduño Alvarado(Administrador de proyecto); Alexis Sebastian Ramos (Diseñador) | 1.5h | 1.5h | 112.17 | 112.17 |
| 33 | 2.3.3.2 | Definición de politicas |  | 0.5h | 2016-05-11 16:30 A | 2016-05-11 17:00 A | 32 | 100% | Estefani Garduño Alvarado(Administrador de proyecto) | 0.5h | 0.5h | 45.01 | 45.01 |
| 34 | 2.3.3.3 | Actualizar plan de proyecto |  | 2h | 2016-05-11 17:00 A | 2016-05-11 19:00 A | 33 | 100% | Yesica Mejia Ramirez(Analista); Estefani Garduño Alvarado(Administrador de proyecto) | 2h | 2h | 133.72 | 133.72 |
| 35 | 2.3.3.4 | Actualizar matriz de comunicación |  | 1h | 2016-05-12 09:00 A | 2016-05-12 10:00 A | 34 | 100% | Yesica Mejia Ramirez(Analista); Estefani Garduño Alvarado(Administrador de proyecto) | 1h | 1h | 66.86 | 66.86 |
| 36 | 2.3.3.5 | **Estimación** |  | 0.75d | 2016-05-12 10:00 A | 2016-05-12 18:00 A | 35 | 100% |  | 6h | 6h | 424.32 | 424.32 |
| 37 | 2.3.3.5.1 | Actualizar WBS/Calendario |  | 1h | 2016-05-12 10:00 A | 2016-05-12 11:00 A | 35 | 100% | Yesica Mejia Ramirez(Analista); Estefani Garduño Alvarado(Administrador de proyecto) | 1h | 1h | 66.86 | 66.86 |
| 38 | 2.3.3.5.2 | Diccionario del WBS |  | 4h | 2016-05-12 11:00 A | 2016-05-12 17:00 A | 37 | 100% | Yesica Mejia Ramirez(Analista); Estefani Garduño Alvarado(Administrador de proyecto) | 4h | 4h | 267.44 | 267.44 |
| 39 | 2.3.3.5.3 | Costos |  | 1h | 2016-05-12 17:00 A | 2016-05-12 18:00 A | 38FS-2h | 100% | Estefani Garduño Alvarado(Administrador de proyecto) | 1h | 1h | 90.02 | 90.02 |
| 40 | 2.3.3.6 | **Riesgos** |  | 1.5d | 2016-05-12 18:00 A | 2016-05-14 12:00 A | 39 | 100% |  | 18h | 18h | 1,481.4 | 1,481.4 |
| 41 | 2.3.3.6.1 | Identificación de riesgos |  | 6h | 2016-05-12 18:00 A | 2016-05-13 16:00 A | 39 | 100% | Estefani Garduño Alvarado(Administrador de proyecto); Yesica Mejia Ramirez(Analista) | 12h | 12h | 941.28 | 941.28 |
| 42 | 2.3.3.6.2 | Asignación de prioridades |  | 2h | 2016-05-13 16:00 A | 2016-05-13 18:00 A | 41 | 100% | Estefani Garduño Alvarado(Administrador de proyecto) | 2h | 2h | 180.04 | 180.04 |
| 43 | 2.3.3.6.3 | Plan de mitigación y contingencia |  | 4h | 2016-05-13 18:00 A | 2016-05-14 12:00 A | 42 | 100% | Estefani Garduño Alvarado(Administrador de proyecto) | 4h | 4h | 360.08 | 360.08 |
| 44 | 2.3.3.7 | **Aseguramiento de la calidad** |  | 0.38d | 2016-05-14 12:00 A | 2016-05-16 11:00 A | 43 | 100% |  | 3h | 3h | 194.78 | 194.78 |
| 45 | 2.3.3.7.1 | Plan de gestión de la configuración |  | 2h | 2016-05-14 12:00 A | 2016-05-16 10:00 A | 43 | 100% | Yesica Mejia Ramirez (Administrador de la configuración); Estefani Garduño Alvarado(Administrador de proyecto) | 2h | 2h | 104.76 | 104.76 |
| 46 | 2.3.3.7.2 | Junta de arranque de construcción |  | 1h | 2016-05-16 10:00 A | 2016-05-16 11:00 A | 45 | 100% | Estefani Garduño Alvarado(Administrador de proyecto) | 1h | 1h | 90.02 | 90.02 |
| 47 | 2.3.3.7.3 | Tener el ciclo de vida a seguir, actualizar el plan del proyecto así como matriz de comunicaciónes, sacar costos, definicion de riesgos con su plan de mitigación | milestone | 0d | 2016-05-16 11:00 A | 2016-05-16 11:00 A | 46 | 100% |  |  |  |  |  |
| 48 | 2.3.4 | **Diseño** |  | 2.62d | 2016-05-16 11:00 A | 2016-05-18 18:00 A | 47 | 100% |  | 25h | 25h | 1,730.63 | 1,730.63 |
| 49 | 2.3.4.1 | Definir la arquitectura |  | 2h | 2016-05-16 11:00 A | 2016-05-16 13:00 A | 47 | 100% | Alexis Sebastian Ramos (Diseñador); Estefani Garduño Alvarado(Administrador de proyecto); Yesica Mejia Ramirez(Analista) | 6h | 6h | 448.7 | 448.7 |
| 50 | 2.3.4.2 | Realizar casos de uso |  | 4h | 2016-05-16 15:00 A | 2016-05-16 19:00 A | 49 | 100% | Alexis Sebastian Ramos (Diseñador); Estefani Garduño Alvarado(Administrador de proyecto) | 4h | 4h | 269.88 | 269.88 |
| 51 | 2.3.4.3 | Realizar diagramas de secuencia |  | 2h | 2016-05-17 09:00 A | 2016-05-17 11:00 A | 50FS-1h | 100% | Alexis Sebastian Ramos (Diseñador); Estefani Garduño Alvarado(Administrador de proyecto) | 2h | 2h | 134.94 | 134.94 |
| 52 | 2.3.4.4 | Realizar diagramas de clases |  | 1h | 2016-05-17 11:00 A | 2016-05-17 12:00 A | 51 | 100% | Alexis Sebastian Ramos (Diseñador); Estefani Garduño Alvarado(Administrador de proyecto) | 1h | 1h | 67.47 | 67.47 |
| 53 | 2.3.4.5 | Realizar diagrama de componentes |  | 1h | 2016-05-17 12:00 A | 2016-05-17 13:00 A | 52 | 100% | Alexis Sebastian Ramos (Diseñador); Estefani Garduño Alvarado(Administrador de proyecto) | 1h | 1h | 67.47 | 67.47 |
| 54 | 2.3.4.6 | Realizar diagrama de despliegue |  | 2h | 2016-05-17 15:00 A | 2016-05-17 17:00 A | 53 | 100% | Alexis Sebastian Ramos (Diseñador); Estefani Garduño Alvarado(Administrador de proyecto) | 2h | 2h | 134.94 | 134.94 |
| 55 | 2.3.4.7 | Realizar el mapa de navegación |  | 1h | 2016-05-17 17:00 A | 2016-05-17 18:00 A | 54 | 100% | Alexis Sebastian Ramos (Diseñador); Estefani Garduño Alvarado(Administrador de proyecto) | 1h | 1h | 67.47 | 67.47 |
| 56 | 2.3.4.8 | Realizar maquetado (bocetos) |  | 6h | 2016-05-17 18:00 A | 2016-05-18 16:00 A | 55FS-2h | 100% | Alexis Sebastian Ramos (Diseñador); Estefani Garduño Alvarado(Administrador de proyecto) | 6h | 6h | 404.82 | 404.82 |

Notes:
- 32: Elegir el ciclo de vida a utilizar, tomando en cuenta que se adapte al proyecto
- 33: Establecer las politicas que guiaran a la empresa a cumplir el objetivo
- 34: Restructurar el plan en base a las nuevas observaciones
- 35: Redefinir los entregables así como los encargados de realizar dichos documentos
- 37: Reacomodar tareas a ejecutar dentro de la planeación, así como el tiempo y los recursos
- 38: En base al WBS elaborar la tabla respectiva para cada una de las tareas, donde se especifique el encargado,descripción de la tarea así como un identificador de cada tarea
- 39: Realizar una estimación de los costos de cada uno de los recursos
- 41: Analizar los posibles riesgos que ponen el peligro la conclusión del mismo
- 43: En base a los riesgos establecer un plan que permita solucionar dicho riesgo
- 45: Estructurar el plan de acuerdo a 4 diferentes carpetas donde se almacenan cada uno de los entregables
- 46: Realizar una reunion con todos los involucrados para dar a conocer la planeación y co0menzar con la elaboración del proyecto
- 50: Elaborar los casos de uso que reflejan el como interactua el usuario con el sistema
- 51: Crear en base a los casos de uso los diagramas de secuencia con los pasos de cada acción que realiza el usuario
- 52: Desarrollar los diagramas de clases de cada modulo
- 55: Realizar mapa donde se muestre como esta estructurada la aplicación y asi mismo mostrar como el usuario podra moverse a través de las interfaces
- 56: Integrar la simulación de las interfaces finales de la aplicación

| ID | WBS | Task | Type | Duration | Start | Finish | Predecessors | Complete | Total slack | Resources | Work | Actual work | Cost | Actual cost |
| --- | --- | --- | --- | --- | --- | --- | --- | --- | --- | --- | --- | --- | --- | --- |
| 57 | 2.3.4.9 | **Diseño de diagramas de la base de datos** |  | 0.25d | 2016-05-18 16:00 A | 2016-05-18 18:00 A | 56 | 100% |  |  | 2h | 2h | 134.94 | 134.94 |
| 58 | 2.3.4.9.1 | Realizar el diagrama E-R |  | 1h | 2016-05-18 16:00 A | 2016-05-18 17:00 A | 56 | 100% |  | Alexis Sebastian Ramos (Diseñador); Estefani Garduño Alvarado(Administrador de proyecto) | 1h | 1h | 67.47 | 67.47 |
| 59 | 2.3.4.9.2 | Realizar el diagrama Relacional |  | 1h | 2016-05-18 17:00 A | 2016-05-18 18:00 A | 58 | 100% |  | Alexis Sebastian Ramos (Diseñador); Estefani Garduño Alvarado(Administrador de proyecto) | 1h | 1h | 67.47 | 67.47 |
| 60 | 2.3.5 | tener la arquitectura a seguir, obtención de diagramas de clases, secuencia, de casos de uso, navegacion, bocetos,E-R Y R | milestone | 0d | 2016-05-18 18:00 | 2016-05-18 18:00 | 59 |  | 67.12d |  |  |  |  |  |
| 61 | 2.3.6 | **Codificación** |  | 7.81d | 2016-05-18 18:00 A | 2016-05-28 10:30 A | 60 | 100% |  |  | 62.5h | 62.5h | 3,603.34 | 3,603.34 |
| 62 | 2.3.6.1 | Codificación de la base de datos |  | 3h | 2016-05-18 18:00 A | 2016-05-19 11:00 A | 60 | 100% |  | Francisco Bautista (Programador); Estefani Garduño Alvarado(Administrador de proyecto) | 3h | 3h | 170.55 | 170.55 |
| 63 | 2.3.6.2 | **Modulo Usuarios** |  | 1.06d | 2016-05-19 11:00 A | 2016-05-20 11:30 A | 62 | 100% |  |  | 8.5h | 8.5h | 483.23 | 483.22 |
| 64 | 2.3.6.2.1 | Codificar interfaz |  | 1h | 2016-05-19 11:00 A | 2016-05-19 12:00 A | 62 | 100% |  | Francisco Bautista (Programador); Estefani Garduño Alvarado(Administrador de proyecto) | 1h | 1h | 56.85 | 56.85 |
| 65 | 2.3.6.2.2 | Clases de usuario |  | 2h | 2016-05-19 12:00 A | 2016-05-19 16:00 A | 64FS-1h | 100% |  | Francisco Bautista (Programador); Estefani Garduño Alvarado(Administrador de proyecto) | 2h | 2h | 113.7 | 113.7 |
| 66 | 2.3.6.2.3 | Realizar conexión a la base de datos |  | 0.5h | 2016-05-19 16:00 A | 2016-05-19 16:30 A | 65 | 100% |  | Francisco Bautista (Programador); Estefani Garduño Alvarado(Administrador de proyecto) | 0.5h | 0.5h | 28.43 | 28.42 |
| 67 | 2.3.6.2.4 | Alta de usuario |  | 0.5h | 2016-05-19 16:30 A | 2016-05-19 17:00 A | 66 | 100% |  | Francisco Bautista (Programador); Estefani Garduño Alvarado(Administrador de proyecto) | 0.5h | 0.5h | 28.43 | 28.42 |
| 68 | 2.3.6.2.5 | Baja de usuario |  | 0.5h | 2016-05-19 17:00 A | 2016-05-19 17:30 A | 67 | 100% |  | Francisco Bautista (Programador); Estefani Garduño Alvarado(Administrador de proyecto) | 0.5h | 0.5h | 28.43 | 28.42 |
| 69 | 2.3.6.2.6 | Actualización de usuario |  | 1h | 2016-05-19 17:30 A | 2016-05-19 18:30 A | 68 | 100% |  | Francisco Bautista (Programador); Estefani Garduño Alvarado(Administrador de proyecto) | 1h | 1h | 56.85 | 56.85 |
| 70 | 2.3.6.2.7 | Consultas de usuario |  | 1h | 2016-05-19 18:30 A | 2016-05-20 09:30 A | 69 | 100% |  | Francisco Bautista (Programador); Estefani Garduño Alvarado(Administrador de proyecto) | 1h | 1h | 56.85 | 56.85 |
| 71 | 2.3.6.2.8 | Reportes de usuario |  | 2h | 2016-05-20 09:30 A | 2016-05-20 11:30 A | 70 | 100% |  | Francisco Bautista (Programador); Estefani Garduño Alvarado(Administrador de proyecto) | 2h | 2h | 113.7 | 113.7 |
| 72 | 2.3.6.3 | **FRONTEND** |  | 1.06d | 2016-05-20 11:30 A | 2016-05-21 12:00 A | 71 | 100% |  |  | 8.5h | 8.5h | 483.23 | 483.22 |
| 73 | 2.3.6.3.1 | **Modulo inicio** |  | 0.25d | 2016-05-20 11:30 A | 2016-05-20 15:30 A | 71 | 100% |  |  | 2h | 2h | 113.7 | 113.7 |
| 74 | 2.3.6.3.1.1 | Codificar interfaz |  | 1h | 2016-05-20 11:30 A | 2016-05-20 12:30 A | 71 | 100% |  | Francisco Bautista (Programador); Estefani Garduño Alvarado(Administrador de proyecto) | 1h | 1h | 56.85 | 56.85 |
| 75 | 2.3.6.3.1.2 | Clases de inicio |  | 1h | 2016-05-20 12:30 A | 2016-05-20 15:30 A | 74FS-0.5h | 100% |  | Francisco Bautista (Programador); Estefani Garduño Alvarado(Administrador de proyecto) | 1h | 1h | 56.85 | 56.85 |
| 76 | 2.3.6.3.2 | **Modulo login** |  | 0.31d | 2016-05-20 15:30 A | 2016-05-20 18:00 A | 75 | 100% |  |  | 2.5h | 2.5h | 142.12 | 142.12 |
| 77 | 2.3.6.3.2.1 | Codificar interfaz |  | 1h | 2016-05-20 15:30 A | 2016-05-20 16:30 A | 75 | 100% |  | Francisco Bautista (Programador); Estefani Garduño Alvarado(Administrador de proyecto) | 1h | 1h | 56.85 | 56.85 |
| 78 | 2.3.6.3.2.2 | Clases de login |  | 1h | 2016-05-20 16:30 A | 2016-05-20 17:30 A | 77FS-0.5d | 100% |  | Francisco Bautista (Programador); Estefani Garduño Alvarado(Administrador de proyecto) | 1h | 1h | 56.85 | 56.85 |
| 79 | 2.3.6.3.2.3 | Realizar conexión a la base de datos |  | 0.5h | 2016-05-20 17:30 A | 2016-05-20 18:00 A | 78 | 100% |  | Francisco Bautista (Programador); Estefani Garduño Alvarado(Administrador de proyecto) | 0.5h | 0.5h | 28.43 | 28.42 |
| 80 | 2.3.6.3.3 | **Modulo historia** |  | 0.12d | 2016-05-20 18:00 A | 2016-05-20 19:00 A | 79 | 100% |  |  | 1h | 1h | 56.85 | 56.85 |
| 81 | 2.3.6.3.3.1 | Codificar interfaz |  | 1h | 2016-05-20 18:00 A | 2016-05-20 19:00 A | 79 | 100% |  | Francisco Bautista (Programador); Estefani Garduño Alvarado(Administrador de proyecto) | 1h | 1h | 56.85 | 56.85 |

Notes:
- 58: Plasmar en el diagrama las entidades con sus respectivos atributos y relaciones
- 59: En base al diagrama E-R integrar las cardinalidades en las relaciones de las tablas
- 62: En base al diagrama relacional codificar las tablas que integrarán la base de datos
- 64: Estructurar la interfaz utilizando patrones de diseño,bootstrap, css,html5
- 65: En base al diagrama de clases codificar la clase del usuario para dar altas, bajas y modificaciones
- 66: realizar la codificación para crear la conexión del sistema con la base de datos
- 67: Codificar la función de dar alta un usuario
- 68: Codificar la función de baja un usuario
- 69: Codificar la función de actualizar un usuario
- 70: Codificar la función que realiza las consultas de usuario
- 71: codificar la función para realizar reportes de usuario
- 74: Estructurar la interfaz utilizando patrones de diseño,bootstrap, css,html5
- 75: En base al diagrama de clases codificar la clase de inicio de sesion
- 77: Estructurar la interfaz utilizando patrones de diseño,bootstrap, css,html5
- 81: Estructurar la interfaz utilizando patrones de diseño,bootstrap, css,html5

| ID | WBS | Task | Duration | Start | Finish | Predecessors | Complete | Resources | Work | Actual work | Cost | Actual cost |
| --- | --- | --- | --- | --- | --- | --- | --- | --- | --- | --- | --- | --- |
| 82 | 2.3.6.3.4 | **Modulo Talleres** | 0.12d | 2016-05-21 09:00 A | 2016-05-21 10:00 A | 81 | 100% |  | 1h | 1h | 56.85 | 56.85 |
| 83 | 2.3.6.3.4.1 | Codificar interfaz | 1h | 2016-05-21 09:00 A | 2016-05-21 10:00 A | 81 | 100% | Francisco Bautista (Programador); Estefani Garduño Alvarado(Administrador de proyecto) | 1h | 1h | 56.85 | 56.85 |
| 84 | 2.3.6.3.5 | **Modulo galeria** | 0.12d | 2016-05-21 10:00 A | 2016-05-21 11:00 A | 83 | 100% |  | 1h | 1h | 56.85 | 56.85 |
| 85 | 2.3.6.3.5.1 | Codificar interfaz | 1h | 2016-05-21 10:00 A | 2016-05-21 11:00 A | 83 | 100% | Francisco Bautista (Programador); Estefani Garduño Alvarado(Administrador de proyecto) | 1h | 1h | 56.85 | 56.85 |
| 86 | 2.3.6.3.6 | **Modulo horario** | 0.12d | 2016-05-21 11:00 A | 2016-05-21 12:00 A | 85 | 100% |  | 1h | 1h | 56.85 | 56.85 |
| 87 | 2.3.6.3.6.1 | Codificar interfaz | 1h | 2016-05-21 11:00 A | 2016-05-21 12:00 A | 85 | 100% | Francisco Bautista (Programador); Estefani Garduño Alvarado(Administrador de proyecto) | 1h | 1h | 56.85 | 56.85 |
| 88 | 2.3.6.4 | **BACKEND** | 4.56d | 2016-05-21 12:00 A | 2016-05-27 12:30 A | 87 | 100% |  | 36.5h | 36.5h | 2,075.03 | 2,075.02 |
| 89 | 2.3.6.4.1 | **Modulo CPANEL** | 0.5d | 2016-05-21 12:00 A | 2016-05-23 12:00 A | 87 | 100% |  | 4h | 4h | 227.4 | 227.4 |
| 90 | 2.3.6.4.1.1 | Codificar interfaz | 1h | 2016-05-21 12:00 A | 2016-05-21 13:00 A | 87 | 100% | Francisco Bautista (Programador); Estefani Garduño Alvarado(Administrador de proyecto) | 1h | 1h | 56.85 | 56.85 |
| 91 | 2.3.6.4.1.2 | Clases de CPANEL | 2h | 2016-05-23 09:00 A | 2016-05-23 11:00 A | 90FS-0.5h | 100% | Francisco Bautista (Programador); Estefani Garduño Alvarado(Administrador de proyecto) | 2h | 2h | 113.7 | 113.7 |
| 92 | 2.3.6.4.1.3 | Realizar conexión a la base de datos | 1h | 2016-05-23 11:00 A | 2016-05-23 12:00 A | 91 | 100% | Francisco Bautista (Programador); Estefani Garduño Alvarado(Administrador de proyecto) | 1h | 1h | 56.85 | 56.85 |
| 93 | 2.3.6.4.2 | **Modulo Alumnos** | 1d | 2016-05-23 12:00 A | 2016-05-24 12:00 A | 92 | 100% |  | 8h | 8h | 454.8 | 454.8 |
| 94 | 2.3.6.4.2.1 | Codificar interfaz | 1h | 2016-05-23 12:00 A | 2016-05-23 13:00 A | 92 | 100% | Francisco Bautista (Programador); Estefani Garduño Alvarado(Administrador de proyecto) | 1h | 1h | 56.85 | 56.85 |
| 95 | 2.3.6.4.2.2 | Clases de alumnos | 1h | 2016-05-23 15:00 A | 2016-05-23 16:00 A | 94FS-0.5h | 100% | Francisco Bautista (Programador); Estefani Garduño Alvarado(Administrador de proyecto) | 1h | 1h | 56.85 | 56.85 |
| 96 | 2.3.6.4.2.3 | Realizar conexión a la base de datos | 1h | 2016-05-23 16:00 A | 2016-05-23 17:00 A | 95 | 100% | Francisco Bautista (Programador); Estefani Garduño Alvarado(Administrador de proyecto) | 1h | 1h | 56.85 | 56.85 |
| 97 | 2.3.6.4.2.4 | Alta de alumnos | 1h | 2016-05-23 17:00 A | 2016-05-23 18:00 A | 96 | 100% | Francisco Bautista (Programador); Estefani Garduño Alvarado(Administrador de proyecto) | 1h | 1h | 56.85 | 56.85 |
| 98 | 2.3.6.4.2.5 | Baja de alumnos | 1h | 2016-05-23 18:00 A | 2016-05-23 19:00 A | 97 | 100% | Francisco Bautista (Programador); Estefani Garduño Alvarado(Administrador de proyecto) | 1h | 1h | 56.85 | 56.85 |
| 99 | 2.3.6.4.2.6 | Actualización de alumnos | 1h | 2016-05-24 09:00 A | 2016-05-24 10:00 A | 98 | 100% | Francisco Bautista (Programador); Estefani Garduño Alvarado(Administrador de proyecto) | 1h | 1h | 56.85 | 56.85 |
| 100 | 2.3.6.4.2.7 | Consultas de alumnos | 1h | 2016-05-24 10:00 A | 2016-05-24 11:00 A | 99 | 100% | Francisco Bautista (Programador); Estefani Garduño Alvarado(Administrador de proyecto) | 1h | 1h | 56.85 | 56.85 |
| 101 | 2.3.6.4.2.8 | Reportes de alumnos | 1h | 2016-05-24 11:00 A | 2016-05-24 12:00 A | 100 | 100% | Francisco Bautista (Programador); Estefani Garduño Alvarado(Administrador de proyecto) | 1h | 1h | 56.85 | 56.85 |
| 102 | 2.3.6.4.3 | **Modulo profesores** | 1.06d | 2016-05-24 12:00 A | 2016-05-25 12:30 A | 101 | 100% |  | 8.5h | 8.5h | 483.23 | 483.22 |
| 103 | 2.3.6.4.3.1 | Codificar interfaz | 1h | 2016-05-24 12:00 A | 2016-05-24 13:00 A | 101 | 100% | Francisco Bautista (Programador); Estefani Garduño Alvarado(Administrador de proyecto) | 1h | 1h | 56.85 | 56.85 |
| 104 | 2.3.6.4.3.2 | Clases de profesores | 1h | 2016-05-24 15:00 A | 2016-05-24 16:00 A | 103FS-0.5h | 100% | Francisco Bautista (Programador); Estefani Garduño Alvarado(Administrador de proyecto) | 1h | 1h | 56.85 | 56.85 |
| 105 | 2.3.6.4.3.3 | Realizar conexión a la base de datos | 1h | 2016-05-24 16:00 A | 2016-05-24 17:00 A | 104 | 100% | Francisco Bautista (Programador); Estefani Garduño Alvarado(Administrador de proyecto) | 1h | 1h | 56.85 | 56.85 |
| 106 | 2.3.6.4.3.4 | Alta de profesores | 1.5h | 2016-05-24 17:00 A | 2016-05-24 18:30 A | 105 | 100% | Francisco Bautista (Programador); Estefani Garduño Alvarado(Administrador de proyecto) | 1.5h | 1.5h | 85.28 | 85.27 |
| 107 | 2.3.6.4.3.5 | Baja de profesores | 1h | 2016-05-24 18:30 A | 2016-05-25 09:30 A | 106 | 100% | Francisco Bautista (Programador); Estefani Garduño Alvarado(Administrador de proyecto) | 1h | 1h | 56.85 | 56.85 |
| 108 | 2.3.6.4.3.6 | Actualización de profesores | 1h | 2016-05-25 09:30 A | 2016-05-25 10:30 A | 107 | 100% | Francisco Bautista (Programador); Estefani Garduño Alvarado(Administrador de proyecto) | 1h | 1h | 56.85 | 56.85 |
| 109 | 2.3.6.4.3.7 | Consultas de profesores | 1h | 2016-05-25 10:30 A | 2016-05-25 11:30 A | 108 | 100% | Francisco Bautista (Programador); Estefani Garduño Alvarado(Administrador de proyecto) | 1h | 1h | 56.85 | 56.85 |
| 110 | 2.3.6.4.3.8 | Reportes de profesores | 1h | 2016-05-25 11:30 A | 2016-05-25 12:30 A | 109 | 100% | Francisco Bautista (Programador); Estefani Garduño Alvarado(Administrador de proyecto) | 1h | 1h | 56.85 | 56.85 |

Notes:
- 83: Estructurar la interfaz utilizando patrones de diseño,bootstrap, css,html5
- 85: Estructurar la interfaz utilizando patrones de diseño,bootstrap, css,html5
- 87: Estructurar la interfaz utilizando patrones de diseño,bootstrap, css,html5
- 90: Estructurar la interfaz utilizando patrones de diseño,bootstrap, css,html5
- 91: En base al diagrama de clases codificar la clase de CPANLE
- 92: realizar la codificación para crear la conexión del sistema con la base de datos
- 94: Estructurar la interfaz utilizando patrones de diseño,bootstrap, css,html5
- 95: En base al diagrama de clases codificar la clase de alumnos
- 96: realizar la codificación para crear la conexión del sistema con la base de datos
- 97: Codificar la función de dar alta un alumno
- 98: Codificar la función de dar de baja un alumno
- 99: Codificar la función de actualizar un alumno
- 100: Codificar la función para hacer una consulta de alumno
- 101: Codificar la función para hacer un reporte de alumno
- 103: Estructurar la interfaz utilizando patrones de diseño,bootstrap, css,html5
- 104: En base al diagrama de clases codificar la clase de profesores
- 105: realizar la codificación para crear la conexión del sistema con la base de datos
- 106: Codificar la función para dar de alta un profesor
- 107: Codificar la función para dar de baja un profesor
- 108: Codificar la función para actualizar un profesor
- 109: Codificar la función para hacer una consulta de profesores
- 110: Codificar la función para hacer un reporte de alumno

| ID | WBS | Task | Type | Duration | Start | Finish | Predecessors | Complete | Resources | Work | Actual work | Cost | Actual cost |
| --- | --- | --- | --- | --- | --- | --- | --- | --- | --- | --- | --- | --- | --- |
| 111 | 2.3.6.4.4 | **Modulo horarios** |  | 1d | 2016-05-25 12:30 A | 2016-05-26 12:30 A | 110 | 100% |  | 8h | 8h | 454.8 | 454.8 |
| 112 | 2.3.6.4.4.1 | Codificar interfaz |  | 1h | 2016-05-25 12:30 A | 2016-05-25 15:30 A | 110 | 100% | Francisco Bautista (Programador); Estefani Garduño Alvarado(Administrador de proyecto) | 1h | 1h | 56.85 | 56.85 |
| 113 | 2.3.6.4.4.2 | Clases de horarios |  | 1h | 2016-05-25 15:30 A | 2016-05-25 16:30 A | 112FS-0.5h | 100% | Francisco Bautista (Programador); Estefani Garduño Alvarado(Administrador de proyecto) | 1h | 1h | 56.85 | 56.85 |
| 114 | 2.3.6.4.4.3 | Realizar conexión a la base de datos |  | 1h | 2016-05-25 16:30 A | 2016-05-25 17:30 A | 113 | 100% | Francisco Bautista (Programador); Estefani Garduño Alvarado(Administrador de proyecto) | 1h | 1h | 56.85 | 56.85 |
| 115 | 2.3.6.4.4.4 | Alta de horarios |  | 1h | 2016-05-25 17:30 A | 2016-05-25 18:30 A | 114 | 100% | Francisco Bautista (Programador); Estefani Garduño Alvarado(Administrador de proyecto) | 1h | 1h | 56.85 | 56.85 |
| 116 | 2.3.6.4.4.5 | Baja de horarios |  | 1h | 2016-05-25 18:30 A | 2016-05-26 09:30 A | 115 | 100% | Francisco Bautista (Programador); Estefani Garduño Alvarado(Administrador de proyecto) | 1h | 1h | 56.85 | 56.85 |
| 117 | 2.3.6.4.4.6 | Actualización de horarios |  | 1h | 2016-05-26 09:30 A | 2016-05-26 10:30 A | 116 | 100% | Francisco Bautista (Programador); Estefani Garduño Alvarado(Administrador de proyecto) | 1h | 1h | 56.85 | 56.85 |
| 118 | 2.3.6.4.4.7 | Consultas de horarios |  | 1h | 2016-05-26 10:30 A | 2016-05-26 11:30 A | 117 | 100% | Francisco Bautista (Programador); Estefani Garduño Alvarado(Administrador de proyecto) | 1h | 1h | 56.85 | 56.85 |
| 119 | 2.3.6.4.4.8 | Reportes de horarios |  | 1h | 2016-05-26 11:30 A | 2016-05-26 12:30 A | 118 | 100% | Francisco Bautista (Programador); Estefani Garduño Alvarado(Administrador de proyecto) | 1h | 1h | 56.85 | 56.85 |
| 120 | 2.3.6.4.5 | **Modulo talleres** |  | 1d | 2016-05-26 12:30 A | 2016-05-27 12:30 A | 119 | 100% |  | 8h | 8h | 454.8 | 454.8 |
| 121 | 2.3.6.4.5.1 | Codificar interfaz |  | 1h | 2016-05-26 12:30 A | 2016-05-26 15:30 A | 119 | 100% | Francisco Bautista (Programador); Estefani Garduño Alvarado(Administrador de proyecto) | 1h | 1h | 56.85 | 56.85 |
| 122 | 2.3.6.4.5.2 | Clases de talleres |  | 1h | 2016-05-26 15:30 A | 2016-05-26 16:30 A | 121FS-0.5h | 100% | Francisco Bautista (Programador); Estefani Garduño Alvarado(Administrador de proyecto) | 1h | 1h | 56.85 | 56.85 |
| 123 | 2.3.6.4.5.3 | Realizar conexión a la base de datos |  | 1h | 2016-05-26 16:30 A | 2016-05-26 17:30 A | 122 | 100% | Francisco Bautista (Programador); Estefani Garduño Alvarado(Administrador de proyecto) | 1h | 1h | 56.85 | 56.85 |
| 124 | 2.3.6.4.5.4 | Alta de taller |  | 1h | 2016-05-26 17:30 A | 2016-05-26 18:30 A | 123 | 100% | Francisco Bautista (Programador); Estefani Garduño Alvarado(Administrador de proyecto) | 1h | 1h | 56.85 | 56.85 |
| 125 | 2.3.6.4.5.5 | Baja de taller |  | 1h | 2016-05-26 18:30 A | 2016-05-27 09:30 A | 124 | 100% | Francisco Bautista (Programador); Estefani Garduño Alvarado(Administrador de proyecto) | 1h | 1h | 56.85 | 56.85 |
| 126 | 2.3.6.4.5.6 | Actualización de taller |  | 1h | 2016-05-27 09:30 A | 2016-05-27 10:30 A | 125 | 100% | Francisco Bautista (Programador); Estefani Garduño Alvarado(Administrador de proyecto) | 1h | 1h | 56.85 | 56.85 |
| 127 | 2.3.6.4.5.7 | Consultas de taller |  | 1h | 2016-05-27 10:30 A | 2016-05-27 11:30 A | 126 | 100% | Francisco Bautista (Programador); Estefani Garduño Alvarado(Administrador de proyecto) | 1h | 1h | 56.85 | 56.85 |
| 128 | 2.3.6.4.5.8 | Reportes de taller |  | 1h | 2016-05-27 11:30 A | 2016-05-27 12:30 A | 127 | 100% | Francisco Bautista (Programador); Estefani Garduño Alvarado(Administrador de proyecto) | 1h | 1h | 56.85 | 56.85 |
| 129 | 2.3.6.4.5.9 | entrega de el sistema funcional con todos sus modulos integrados | milestone, manual | 0d | 2016-05-26 12:30 A | 2016-05-26 12:30 A |  | 100% |  |  |  |  |  |
| 130 | 2.3.6.5 | **Pruebas** |  | 0.75d | 2016-05-27 12:30 A | 2016-05-28 10:30 A | 128 | 100% |  | 6h | 6h | 391.32 | 391.32 |
| 131 | 2.3.6.5.1 | **Realizar pruebas de caja blanca** |  | 0.75d | 2016-05-27 12:30 A | 2016-05-28 10:30 A | 128 | 100% |  | 6h | 6h | 391.32 | 391.32 |
| 132 | 2.3.6.5.1.1 | **Módulos de usuarios** |  | 0.12d | 2016-05-27 12:30 A | 2016-05-27 15:30 A | 128 | 100% |  | 1h | 1h | 65.22 | 65.22 |
| 133 | 2.3.6.5.1.1.1 | Pruebas unitarias |  | 1h | 2016-05-27 12:30 A | 2016-05-27 15:30 A | 128 | 100% | Francisco Bautista (Tester); Estefani Garduño Alvarado(Administrador de proyecto) | 1h | 1h | 65.22 | 65.22 |
| 134 | 2.3.6.5.1.2 | **Módulos de login** |  | 0.62d | 2016-05-27 15:30 A | 2016-05-28 10:30 A |  | 100% |  | 5h | 5h | 326.1 | 326.1 |
| 135 | 2.3.6.5.1.2.1 | Pruebas unitarias |  | 1h | 2016-05-27 15:30 A | 2016-05-27 16:30 A | 133 | 100% | Francisco Bautista (Tester); Estefani Garduño Alvarado(Administrador de proyecto) | 1h | 1h | 65.22 | 65.22 |

Notes:
- 112: Estructurar la interfaz utilizando patrones de diseño,bootstrap, css,html5
- 113: En base al diagrama de clases codificar la clase de horarios
- 114: realizar la codificación para crear la conexión del sistema con la base de datos
- 115: Codificar la función para dar de alta un horario
- 116: Codificar la función para dar de baja un horario
- 117: Codificar la función para actualizar un horario
- 118: Codificar la función para hacer una consulta de horarios
- 119: Codificar la función para hacer un reporte de horario
- 121: Estructurar la interfaz utilizando patrones de diseño,bootstrap, css,html5
- 122: En base al diagrama de clases codificar la clase de taller
- 123: realizar la codificación para crear la conexión del sistema con la base de datos
- 124: Codificar la función para dar de alta un taller
- 125: Codificar la función para dar de baja un taller
- 126: Codificar la función para actualizar un taller
- 127: Codificar la función para hacer una consulta de taller
- 128: Codificar la función para hacer una reporte de taller
- 133: Realizar Pruebas para probar el correcto funcionamiento del modulo de usuarios
- 135: Realizar Pruebas para probar el correcto funcionamiento del modulo de login

| ID | WBS | Task | Type | Duration | Start | Finish | Predecessors | Complete | Remaining | Total slack | Resources | Work | Actual work | Cost | Actual cost |
| --- | --- | --- | --- | --- | --- | --- | --- | --- | --- | --- | --- | --- | --- | --- | --- |
| 136 | 2.3.6.5.1.2.2 | **Módulos de talleres** |  | 0.12d | 2016-05-27 16:30 A | 2016-05-27 17:30 A |  | 100% |  |  |  | 1h | 1h | 65.22 | 65.22 |
| 137 | 2.3.6.5.1.2.2.1 | Pruebas unitarias |  | 1h | 2016-05-27 16:30 A | 2016-05-27 17:30 A | 135 | 100% |  |  | Francisco Bautista (Tester); Estefani Garduño Alvarado(Administrador de proyecto) | 1h | 1h | 65.22 | 65.22 |
| 138 | 2.3.6.5.1.2.3 | **Módulos de alumnos** |  | 0.12d | 2016-05-27 17:30 A | 2016-05-27 18:30 A |  | 100% |  |  |  | 1h | 1h | 65.22 | 65.22 |
| 139 | 2.3.6.5.1.2.3.1 | Pruebas unitarias |  | 1h | 2016-05-27 17:30 A | 2016-05-27 18:30 A | 137 | 100% |  |  | Francisco Bautista (Tester); Estefani Garduño Alvarado(Administrador de proyecto) | 1h | 1h | 65.22 | 65.22 |
| 140 | 2.3.6.5.1.2.4 | **Módulos de profesores** |  | 0.12d | 2016-05-27 18:30 A | 2016-05-28 09:30 A |  | 100% |  |  |  | 1h | 1h | 65.22 | 65.22 |
| 141 | 2.3.6.5.1.2.4.1 | Pruebas unitarias |  | 1h | 2016-05-27 18:30 A | 2016-05-28 09:30 A | 139 | 100% |  |  | Francisco Bautista (Tester); Estefani Garduño Alvarado(Administrador de proyecto) | 1h | 1h | 65.22 | 65.22 |
| 142 | 2.3.6.5.1.2.5 | **Módulos de horarios** |  | 0.12d | 2016-05-28 09:30 A | 2016-05-28 10:30 A |  | 100% |  |  |  | 1h | 1h | 65.22 | 65.22 |
| 143 | 2.3.6.5.1.2.5.1 | Pruebas unitarias |  | 1h | 2016-05-28 09:30 A | 2016-05-28 10:30 A | 141 | 100% |  |  | Francisco Bautista (Tester); Estefani Garduño Alvarado(Administrador de proyecto) | 1h | 1h | 65.22 | 65.22 |
| 144 | 2.3.7 | entregar el sistema con pruevas realizadas y con posibles errores corregidos | milestone | 0d | 2016-05-04 18:00 | 2016-05-04 18:00 |  |  |  | 78.12d |  |  |  |  |  |
| 145 | 2.3.8 | **Implementación** |  | 1.5d | 2016-05-28 10:30 A | 2016-05-31 10:30 |  | 33% | 1d | 0d |  | 10h | 4h | 717.92 | 260.57 |
| 146 | 2.3.8.1 | Evaluación del hosting |  | 1h | 2016-05-28 10:30 A | 2016-05-28 12:30 A | 143 | 100% |  |  | Francisco Bautista (Programador); Estefani Garduño Alvarado(Administrador de proyecto) | 2h | 2h | 146.87 | 146.87 |
| 147 | 2.3.8.2 | Implementar el sitio al hosting |  | 1h | 2016-05-28 12:30 A | 2016-05-30 10:30 A | 146 | 100% |  |  | Francisco Bautista (Programador); Estefani Garduño Alvarado(Administrador de proyecto) | 1h | 1h | 56.85 | 56.85 |
| 148 | 2.3.8.3 | Manual de usuario |  | 1h | 2016-05-30 10:30 A | 2016-05-30 12:30 A | 147 | 100% |  |  | Francisco Bautista (Programador); Estefani Garduño Alvarado(Administrador de proyecto) | 1h | 1h | 56.85 | 56.85 |
| 149 | 2.3.8.4 | Capacitación |  | 2h | 2016-05-30 12:30 | 2016-05-30 16:30 | 148 |  |  | 0d | Francisco Bautista (Programador); Estefani Garduño Alvarado(Administrador de proyecto) | 2h |  | 146.87 |  |
| 150 | 2.3.8.5 | **Realizar pruebas de caja blanca** |  | 0.5d | 2016-05-30 16:30 | 2016-05-31 10:30 |  |  |  | 0d |  | 4h |  | 310.48 |  |
| 151 | 2.3.8.5.1 | Pruebas de rendimiento |  | 2h | 2016-05-30 16:30 | 2016-05-30 18:30 | 149 |  |  | 0d | Francisco Bautista (Tester); Estefani Garduño Alvarado(Administrador de proyecto) | 2h |  | 155.24 |  |
| 152 | 2.3.8.5.2 | Pruebas de sistema |  | 2h | 2016-05-30 18:30 | 2016-05-31 10:30 | 151 |  |  | 0d | Francisco Bautista (Tester); Estefani Garduño Alvarado(Administrador de proyecto) | 2h |  | 155.24 |  |
| 153 | 2.3.9 | elegir el hosting en base a preci, espacio y seguridad, subir el sitio a dicho hosting, el manual de usuario contendra una explicacion de como utilizar la aplicación | milestone | 0d | 2016-05-31 10:30 | 2016-05-31 10:30 | 152 |  |  | 0d |  |  |  |  |  |
| 154 | 2.3.10 | **Cierre de proyecto** |  | 0.88d | 2016-05-31 10:30 | 2016-06-01 09:30 |  |  |  | 0d |  | 10h |  | 691.42 |  |
| 155 | 2.3.10.1 | Carta de aceptación |  | 1h | 2016-05-31 10:30 | 2016-05-31 11:30 | 152 |  |  | 0d | Cliente; Estefani Garduño Alvarado(Administrador de proyecto) | 2h |  | 90.02 |  |
| 156 | 2.3.10.2 | Acta de cierre de proyecto |  | 1h | 2016-05-31 11:30 | 2016-05-31 12:30 | 155 |  |  | 0d | Estefani Garduño Alvarado(Administrador de proyecto) | 1h |  | 90.02 |  |
| 157 | 2.3.10.3 | Evaluación de desempeño |  | 1h | 2016-05-31 12:30 | 2016-05-31 15:30 | 156 |  |  | 0d | Estefani Garduño Alvarado(Administrador de proyecto) | 1h |  | 90.02 |  |
| 158 | 2.3.10.4 | Junta de lecciones aprendidas |  | 1h | 2016-05-31 15:30 | 2016-05-31 16:30 | 157 |  |  | 0d | Estefani Garduño Alvarado(Administrador de proyecto) | 1h |  | 90.02 |  |
| 159 | 2.3.10.5 | Revisión de adherencias de procesos |  | 1h | 2016-05-31 16:30 | 2016-05-31 17:30 | 158 |  |  | 0d | Estefani Garduño Alvarado(Administrador de proyecto); Alexis Ramos Caballero (Asegurador de la calidad) | 2h |  | 151.3 |  |
| 160 | 2.3.10.6 | Liberación de los recursos |  | 1h | 2016-05-31 17:30 | 2016-05-31 18:30 | 159 |  |  | 0d | Estefani Garduño Alvarado(Administrador de proyecto) | 1h |  | 90.02 |  |
| 161 | 2.3.10.7 | Informe final(cierre) |  | 1h | 2016-05-31 18:30 | 2016-06-01 09:30 | 160 |  |  | 0d | Estefani Garduño Alvarado(Administrador de proyecto); Cliente | 2h |  | 90.02 |  |
| 162 | 2.3.10.8 | carta de aceptación debe ser firmada por el cliente asi como la liberación de recursos | milestone | 0d | 2016-06-01 09:30 | 2016-06-01 09:30 | 161 |  |  | 0d |  |  |  |  |  |

Notes:
- 137: Realizar Pruebas para probar el correcto funcionamiento del modulo de talleres
- 139: Realizar Pruebas para probar el correcto funcionamiento del modulo de alumnos
- 141: Realizar Pruebas para probar el correcto funcionamiento del modulo de profesores
- 143: Realizar Pruebas para probar el correcto funcionamiento del modulo de horarios
- 146: Realizar una investigación de los diferentes hosting y así elegir el mejor
- 147: subir el sitio al servidor
- 148: crear un manual para el usuario donde se describa la funcionalidad del sitio
- 149: Dar una explicación acerca de como utilizar el sistema
- 151: Revisa el rendimiento para determinar la rapidez en que se realiza la tarea en el sistema así como también validar y verificar algunos atributos de la calidad del sistema
- 152: realizar pruebas basandonos en lo requerimientos y la funcionalidad del sistema
- 155: realizar el documento donde el cliente nos firme que esta de acuerdo con el sistema que se le entrego
- 156: realizar una acta donde se muestre la culminación del proyecto
- 157: evaluar el trabajo y la conducta que tubieron los integrantes del proyecto
- 158: hacer una reunion donde los integrantes de proyecto para que den su punto de vista hacerca de los problemas que presentaron a la hora de realizar el proyecto y con esto aprender y poder mitigar el problema
- 159: son las revisiones de todos los procesos aplicados en el sistema
- 160: se liberan los gastos y cobran la totalidad del proyecto
- 161: se realiza una carta de finalización de proyecto donde el cliente firma si esta de acuerdo con el proyecto

| ID | WBS | Task | Type | Duration | Start | Finish | Complete | Remaining | Total slack | Constraint | Resources |
| --- | --- | --- | --- | --- | --- | --- | --- | --- | --- | --- | --- |
| 165 | 2.3.11 | **Revisión** |  | 77d | 2016-05-06 09:00 A | 2016-08-12 09:00 |  | 77d | 0d |  |  |
| 166 | 2.3.11.1 | Revisión 1 | milestone, manual | 0d | 2016-05-06 09:00 A | 2016-05-06 09:00 A | 100% |  |  | start no earlier than 2016-05-06 09:00 | Estefani Garduño Alvarado(Administrador de proyecto); Alexis Ramos Caballero (Asegurador de la calidad) |
| 167 | 2.3.11.2 | Revisión 2 | milestone, manual | 0d | 2016-05-13 09:00 A | 2016-05-13 09:00 A | 100% |  |  | start no earlier than 2016-05-13 09:00 | Estefani Garduño Alvarado(Administrador de proyecto); Alexis Ramos Caballero (Asegurador de la calidad) |
| 168 | 2.3.11.3 | Revisión 3 | milestone, manual | 0d | 2016-05-20 09:00 A | 2016-05-20 09:00 A | 100% |  |  | start no earlier than 2016-05-20 09:00 | Estefani Garduño Alvarado(Administrador de proyecto); Alexis Ramos Caballero (Asegurador de la calidad) |
| 169 | 2.3.11.4 | Revisión 4 | milestone, manual | 0d | 2016-05-27 09:00 A | 2016-05-27 09:00 A | 100% |  |  | start no earlier than 2016-05-27 09:00 | Estefani Garduño Alvarado(Administrador de proyecto); Alexis Ramos Caballero (Asegurador de la calidad) |
| 170 | 2.3.11.5 | Revisión 5 | milestone, manual | 0d | 2016-07-02 09:00 A | 2016-07-02 09:00 A | 100% |  |  | start no earlier than 2016-07-02 09:00 | Estefani Garduño Alvarado(Administrador de proyecto); Alexis Ramos Caballero (Asegurador de la calidad) |
| 171 | 2.3.11.6 | Revisión 6 | milestone, manual | 0d | 2016-06-10 09:00 A | 2016-06-10 09:00 A | 100% |  |  | start no earlier than 2016-06-10 09:00 | Estefani Garduño Alvarado(Administrador de proyecto); Alexis Ramos Caballero (Asegurador de la calidad) |
| 172 | 2.3.11.7 | Revisión 7 | milestone, manual | 0d | 2016-06-17 09:00 A | 2016-06-17 09:00 A | 100% |  |  | start no earlier than 2016-06-17 09:00 | Estefani Garduño Alvarado(Administrador de proyecto); Alexis Ramos Caballero (Asegurador de la calidad) |
| 173 | 2.3.11.8 | Revisión 8 | milestone, manual | 0d | 2016-06-24 09:00 A | 2016-06-24 09:00 A | 100% |  |  | start no earlier than 2016-06-24 09:00 | Estefani Garduño Alvarado(Administrador de proyecto); Alexis Ramos Caballero (Asegurador de la calidad) |
| 174 | 2.3.11.9 | Revisión 9 | milestone, manual | 0d | 2016-07-01 09:00 A | 2016-07-01 09:00 A | 100% |  |  | start no earlier than 2016-07-01 09:00 | Estefani Garduño Alvarado(Administrador de proyecto); Alexis Ramos Caballero (Asegurador de la calidad) |
| 175 | 2.3.11.10 | Revisión 10 | milestone, manual | 0d | 2016-07-08 09:00 | 2016-07-08 09:00 |  |  |  | start no earlier than 2016-07-08 09:00 | Estefani Garduño Alvarado(Administrador de proyecto); Alexis Ramos Caballero (Asegurador de la calidad) |
| 176 | 2.3.11.11 | Revisión 11 | milestone, manual | 0d | 2016-07-15 09:00 | 2016-07-15 09:00 |  |  |  | start no earlier than 2016-07-15 09:00 | Estefani Garduño Alvarado(Administrador de proyecto); Alexis Ramos Caballero (Asegurador de la calidad) |
| 177 | 2.3.11.12 | Revisión 12 | milestone, manual | 0d | 2016-07-22 09:00 | 2016-07-22 09:00 |  |  |  | start no earlier than 2016-07-22 09:00 | Estefani Garduño Alvarado(Administrador de proyecto); Alexis Ramos Caballero (Asegurador de la calidad) |
| 178 | 2.3.11.13 | Revisión 13 | milestone, manual | 0d | 2016-07-29 09:00 | 2016-07-29 09:00 |  |  |  | start no earlier than 2016-07-29 09:00 | Estefani Garduño Alvarado(Administrador de proyecto); Alexis Ramos Caballero (Asegurador de la calidad) |
| 179 | 2.3.11.14 | Revisión 14 | milestone, manual | 0d | 2016-08-05 09:00 | 2016-08-05 09:00 |  |  |  | start no earlier than 2016-08-05 09:00 | Estefani Garduño Alvarado(Administrador de proyecto); Alexis Ramos Caballero (Asegurador de la calidad) |
| 180 | 2.3.11.15 | Revisión 15 | milestone, manual | 0d | 2016-08-12 09:00 | 2016-08-12 09:00 |  |  |  | start no earlier than 2016-08-12 09:00 | Estefani Garduño Alvarado(Administrador de proyecto); Alexis Ramos Caballero (Asegurador de la calidad) |
